Schedule from ProjectLibre, 2015-02-26 to 2015-04-03.

## Calendars

- Padrão[Imported]: Mon-Fri 09:00-12:00, 13:00-18:00; Sat-Sun off.

## Resources

| Resource |
| --- |
| Não atribuído |
| Gerente do Projeto |
| Analista de Sistema |
| Testador |
| Desenvolvedor |

## Schedule

| ID | WBS | Task | Type | Duration | Start | Finish | Predecessors | Total slack | Resources |
| --- | --- | --- | --- | --- | --- | --- | --- | --- | --- |
| 1 | 1 | **Planejamento do Projeto** |  | 4d? | 2015-02-26 | 2015-03-03 |  |  |  |
| 2 | 1.1 | Receber Declaração de Trabalho |  | 1d? | 2015-02-26 | 2015-02-26 |  |  | Gerente do Projeto |
| 3 | 1.2 | **Macro Projeto** |  | 2d? | 2015-02-27 | 2015-03-02 | 2 |  |  |
| 4 | 1.2.1 | Realizar Levantamento de Requisitos |  | 1d? | 2015-02-27 | 2015-02-27 |  |  | Analista de Sistema |
| 5 | 1.2.2 | Estimar e Dimensionar Tarefas |  | 1d? | 2015-02-27 | 2015-02-27 | 4SS | 100d | Analista de Sistema |
| 6 | 1.2.3 | Identificar Riscos Iniciais |  | 1d? | 2015-02-27 | 2015-02-27 | 4SS | 100d | Gerente do Projeto |
| 7 | 1.2.4 | Verificar viabilidade do projeto |  | 0.25d? | 2015-02-27 | 2015-02-27 | 4SS | 175d | Gerente do Projeto |
| 8 | 1.2.5 | Elaborar Documento de AnteProjeto |  | 1d? | 2015-02-27 | 2015-02-27 | 4SS |  | Gerente do Projeto |
| 9 | 1.2.6 | Obter Aceite do Cliente |  | 1d? | 2015-03-02 | 2015-03-02 | 8 |  | Gerente do Projeto |
| 10 | 1.3 | Realizar Kick-off do Projeto |  | 1d? | 2015-03-03 | 2015-03-03 | 3 |  | Gerente do Projeto |
| 11 | 2 | **Implementação de Software** |  | 22.56d? | 2015-03-04 | 2015-04-03 | 1 |  |  |
| 12 | 2.1 | **Análise dos Requisitos do Software** |  | 3d? | 2015-03-04 | 2015-03-06 |  |  |  |
| 13 | 2.1.1 | Detalhar Requisitos do Cliente |  | 1d? | 2015-03-04 | 2015-03-04 |  |  | Analista de Sistema [25%] |
| 14 | 2.1.2 | Realizar Rastreabilidade entre Requisitos |  | 1d? | 2015-03-04 | 2015-03-04 | 13SS | 200d | Analista de Sistema [6.25%] |
| 15 | 2.1.3 | Elaborar Documento de Especificação Técnica |  | 1d? | 2015-03-04 | 2015-03-04 | 13SS |  | Analista de Sistema [12.5%] |
| 16 | 2.1.4 | Realizar Verificação dos Requisitos |  | 1d? | 2015-03-05 | 2015-03-05 | 15 |  | Analista de Sistema [6.25%] |
| 17 | 2.1.5 | Criar Baseline de Requisitos |  | 1d | 2015-03-06 | 2015-03-06 | 16 |  | Analista de Sistema [6.25%] |
| 18 | 2.1.6 | Disponibilizar e Comunicar Documento de Especificação Técnica | milestone | 0d | 2015-03-06 | 2015-03-06 | 17 |  | Analista de Sistema |
| 19 | 2.2 | **Projeto de Arquitetura e Detalhamento do Software** |  | 2d? | 2015-03-09 | 2015-03-10 | 12 |  |  |
| 20 | 2.2.1 | Detalhar Arquitetura de Software |  | 1d? | 2015-03-09 | 2015-03-09 |  |  | Analista de Sistema [25%] |
| 21 | 2.2.2 | Realizar Rastreabilidade entre Requisitos e Componentes de Arquitetura |  | 1d? | 2015-03-09 | 2015-03-09 | 20SS | 100d | Analista de Sistema [6.25%] |
| 22 | 2.2.3 | Atualizar Documento de Especificação Técnica |  | 1d? | 2015-03-09 | 2015-03-09 | 20SS |  | Analista de Sistema [12.5%] |
| 23 | 2.2.4 | Criar Baseline de Requisitos e Arquitetura |  | 1d | 2015-03-10 | 2015-03-10 | 22 |  | Analista de Sistema [6.25%] |
| 24 | 2.2.5 | Disponibilizar e Comunicar Documento de Especificação Técnica | milestone | 0d | 2015-03-10 | 2015-03-10 | 23 |  | Analista de Sistema |
| 25 | 2.2.6 | Elaborar Caso de Testes com Base nos Requisitos |  | 1d? | 2015-03-10 | 2015-03-10 | 22 |  | Testador [25%] |

| ID | WBS | Task | Type | Duration | Start | Finish | Predecessors | Total slack | Resources |
| --- | --- | --- | --- | --- | --- | --- | --- | --- | --- |
| 26 | 2.3 | **Construção do Software** |  | 4.81d? | 2015-03-11 | 2015-03-17 | 19 |  |  |
| 27 | 2.3.1 | Criar / Atualizar Ambiente |  | 1d? | 2015-03-11 | 2015-03-11 |  | 380.77d | Desenvolvedor [12.5%] |
| 28 | 2.3.2 | **Requisito 999** |  | 4.81d? | 2015-03-11 | 2015-03-17 |  |  |  |
| 29 | 2.3.2.1 | Realizar Codificação do Requisito |  | 4.81d? | 2015-03-11 | 2015-03-17 |  |  | Desenvolvedor [13%] |
| 30 | 2.3.2.2 | Elaborar Caso de Teste Unitário |  | 0.48d? | 2015-03-11 | 2015-03-11 |  | 432.69d | Desenvolvedor [13%] |
| 31 | 2.3.2.3 | Realizar Teste Unitário |  | 0.48d? | 2015-03-11 | 2015-03-11 |  | 432.69d | Desenvolvedor [13%] |
| 32 | 2.4 | **Integração e Testes do Software** |  | 11.79d? | 2015-03-17 | 2015-04-02 | 26 |  |  |
| 33 | 2.4.1 | Realizar Integração dos Requisitos |  | 0.96d? | 2015-03-17 | 2015-03-18 |  |  | Desenvolvedor [13%] |
| 34 | 2.4.2 | Disponibilizar no Ambiente de Teste |  | 0.48d? | 2015-03-18 | 2015-03-19 | 33 |  | Desenvolvedor [13%] |
| 35 | 2.4.3 | **Testes Internos** |  | 5.06d? | 2015-03-19 | 2015-03-26 | 34 |  |  |
| 36 | 2.4.3.1 | Realizar Testes com Base nos Casos de Testes |  | 2.5d? | 2015-03-19 | 2015-03-23 |  |  | Testador [25%] |
| 37 | 2.4.3.2 | Registrar Resultado dos Testes |  | 0.25d? | 2015-03-19 | 2015-03-19 | 36SS |  | Testador [25%] |
| 38 | 2.4.3.3 | Realizar Correções com base nos Resultados dos Testes |  | 4.81d? | 2015-03-19 | 2015-03-26 | 37 |  | Desenvolvedor [13%] |
| 39 | 2.4.4 | **Documentação** |  | 1.25d? | 2015-03-19 | 2015-03-20 | 35SS | 909.62d |  |
| 40 | 2.4.4.1 | Elaborar/Atualizar Manual do Usuário |  | 1d? | 2015-03-19 | 2015-03-20 |  | 909.62d | Testador [25%] |
| 41 | 2.4.4.2 | Realizar Verificação do Manual do Usuário |  | 0.25d? | 2015-03-20 | 2015-03-20 | 40 | 909.62d | Testador [25%] |
| 42 | 2.4.5 | **Homologação do Produto - Cliente** |  | 5.29d? | 2015-03-26 | 2015-04-02 | 35 |  |  |
| 43 | 2.4.5.1 | Disponibilizar Software no Ambiente de Homologação |  | 0.48d? | 2015-03-26 | 2015-03-26 |  |  | Desenvolvedor [13%] |
| 44 | 2.4.5.2 | Realizar Testes de Homologação |  | 4.81d? | 2015-03-26 | 2015-04-02 | 43 |  | Desenvolvedor [13%] |
| 45 | 2.4.5.3 | Registrar Homologação | milestone | 0d | 2015-04-02 | 2015-04-02 | 44 |  | Desenvolvedor [13%] |
| 46 | 2.5 | **Entrega do Produto** |  | 0.96d? | 2015-04-02 | 2015-04-03 | 32 |  |  |
| 47 | 2.5.1 | Criar Baseline de Entrega do Produto |  | 0.48d? | 2015-04-02 | 2015-04-03 |  |  | Desenvolvedor [13%] |
| 48 | 2.5.2 | Disponibilizar Software no Ambiente de Produção |  | 0.48d? | 2015-04-03 | 2015-04-03 | 47 |  | Desenvolvedor [13%] |
| 49 | 2.5.3 | Comunicar Encerramento do Projeto | milestone | 0d | 2015-04-03 | 2015-04-03 | 48 |  | Gerente do Projeto |
